# Software Development Plan

Schedule from MS Project, 2014-11-06 to 2015-04-22, status date 2014-11-29, A marks actual dates.

## Calendars

- Standard: Mon-Fri 09:00-13:00, 14:00-17:30; Sat-Sun off. Exceptions (off unless hours are given): 2014-12-24 to 2015-01-02 (Christmas 2014), 2015-04-03 to 2015-04-06 (Easter 2015).

## Resources

| Resource |
| --- |
| Management |
| Project Manager |
| Analyst |
| Developer |
| Testers |
| Trainers |
| Technical Communicators |
| Deployment Team |

## Schedule

| ID | WBS | Task | Type | Duration | Start | Finish | Predecessors | Complete | Remaining | Baseline start | Baseline finish | Baseline duration | Total slack | Resources | Work | Actual work | PM3 Milestone | Plan QA |
| --- | --- | --- | --- | --- | --- | --- | --- | --- | --- | --- | --- | --- | --- | --- | --- | --- | --- | --- |
| 1 | 1 | **Scope** |  | 3.5d | 2014-11-06 A | 2014-11-11 A |  | 100% |  | 2014-11-06 | 2014-11-11 | 3.5d |  |  | 28h | 28h |  |  |
| 2 | 1.1 | Determine project scope |  | 4h | 2014-11-06 A | 2014-11-06 A |  | 100% |  | 2014-11-06 | 2014-11-06 | 4h |  | Management | 4h | 4h |  |  |
| 3 | 1.2 | Secure project sponsorship |  | 1d | 2014-11-06 A | 2014-11-07 A | 2 | 100% |  | 2014-11-06 | 2014-11-07 | 1d |  | Management | 8h | 8h |  |  |
| 4 | 1.3 | Define preliminary resources |  | 1d | 2014-11-07 A | 2014-11-10 A | 3 | 100% |  | 2014-11-07 | 2014-11-10 | 1d |  | Project Manager | 8h | 8h |  |  |
| 5 | 1.4 | Secure core resources |  | 1d | 2014-11-10 A | 2014-11-11 A | 4 | 100% |  | 2014-11-10 | 2014-11-11 | 1d |  | Project Manager | 8h | 8h |  |  |
| 6 | 1.5 | Scope complete | milestone | 0d | 2014-11-11 A | 2014-11-11 A | 5 | 100% |  | 2014-11-11 | 2014-11-11 | 0d |  |  |  |  | Yes |  |
| 7 | 2 | **Analysis/Software Requirements** |  | 14d | 2014-11-11 A | 2014-12-02 |  | 71% | 4d | 2014-11-11 | 2014-12-02 | 14d | 0d |  | 120h | 80h |  |  |
| 8 | 2.1 | Conduct needs analysis |  | 5d | 2014-11-11 A | 2014-11-19 A | 6 | 100% |  | 2014-11-11 | 2014-11-19 | 5d |  | Analyst | 40h | 40h |  |  |
| 9 | 2.2 | Draft preliminary software specifications |  | 3d | 2014-11-19 A | 2014-11-24 A | 8 | 100% |  | 2014-11-19 | 2014-11-24 | 3d |  | Analyst | 24h | 24h |  |  |
| 10 | 2.3 | Develop preliminary budget |  | 2d | 2014-11-24 A | 2014-11-26 A | 9 | 100% |  | 2014-11-24 | 2014-11-26 | 2d |  | Project Manager | 16h | 16h |  |  |
| 11 | 2.4 | Review software specifications/budget with team |  | 4h | 2014-11-26 | 2014-11-26 | 10 |  |  | 2014-11-26 | 2014-11-26 | 4h | 0d | Project Manager; Analyst | 8h |  |  | Incomplete in past. |
| 12 | 2.5 | Incorporate feedback on software specifications |  | 1d | 2014-11-26 | 2014-11-27 | 11 |  |  | 2014-11-26 | 2014-11-27 | 1d | 0d | Analyst | 8h |  |  | Incomplete in past. |
| 13 | 2.6 | Develop delivery timeline |  | 1d | 2014-11-28 | 2014-12-01 | 12 |  |  | 2014-11-28 | 2014-12-01 | 1d | 0d | Project Manager | 8h |  |  | Incomplete in past. |
| 14 | 2.7 | Obtain approvals to proceed (concept, timeline, budget) |  | 4h | 2014-12-01 | 2014-12-01 | 13 |  |  | 2014-12-01 | 2014-12-01 | 4h | 0d | Management; Project Manager | 8h |  |  |  |
| 15 | 2.8 | Secure required resources |  | 1d | 2014-12-01 | 2014-12-02 | 14 |  |  | 2014-12-01 | 2014-12-02 | 1d | 0d | Project Manager | 8h |  |  |  |
| 16 | 2.9 | Analysis complete | milestone | 0d | 2014-12-02 | 2014-12-02 | 15 |  |  | 2014-12-02 | 2014-12-02 | 0d | 0d |  |  |  | Yes |  |
| 17 | 3 | **Design** |  | 14.5d | 2014-12-02 | 2015-01-05 |  |  |  | 2014-12-02 | 2015-01-05 | 14.5d | 0d |  | 120h |  |  |  |
| 18 | 3.1 | Review preliminary software specifications |  | 2d | 2014-12-02 | 2014-12-04 | 16 |  |  | 2014-12-02 | 2014-12-04 | 2d | 0d | Analyst | 16h |  |  |  |
| 19 | 3.2 | Develop functional specifications |  | 5d | 2014-12-04 | 2014-12-12 | 18 |  |  | 2014-12-04 | 2014-12-12 | 5d | 0d | Analyst | 40h |  |  |  |
| 20 | 3.3 | Develop prototype based on functional specifications |  | 4d | 2014-12-12 | 2014-12-18 | 19 |  |  | 2014-12-12 | 2014-12-18 | 4d | 0d | Analyst | 32h |  |  |  |
| 21 | 3.4 | Review functional specifications |  | 2d | 2014-12-18 | 2014-12-22 | 20 |  |  | 2014-12-18 | 2014-12-22 | 2d | 0d | Management | 16h |  |  |  |
| 22 | 3.5 | Incorporate feedback into functional specifications |  | 1d | 2014-12-22 | 2014-12-23 | 21 |  |  | 2014-12-22 | 2014-12-23 | 1d | 0d | Management | 8h |  |  |  |
| 23 | 3.6 | Obtain approval to proceed |  | 4h | 2014-12-23 | 2015-01-05 | 22 |  |  | 2014-12-23 | 2015-01-05 | 4h | 0d | Management; Project Manager | 8h |  |  |  |
| 24 | 3.7 | Design complete | milestone | 0d | 2015-01-05 | 2015-01-05 | 23 |  |  | 2015-01-05 | 2015-01-05 | 0d | 0d |  |  |  | Yes |  |

| ID | WBS | Task | Type | Duration | Start | Finish | Predecessors | Baseline start | Baseline finish | Baseline duration | Total slack | Free slack | Resources | Work | PM3 Milestone |
| --- | --- | --- | --- | --- | --- | --- | --- | --- | --- | --- | --- | --- | --- | --- | --- |
| 25 | 4 | **Development** |  | 21.75d | 2015-01-05 | 2015-02-05 |  | 2015-01-05 | 2015-02-05 | 21.75d | 0d |  |  | 264h |  |
| 26 | 4.1 | Review functional specifications |  | 1d | 2015-01-05 | 2015-01-06 | 24 | 2015-01-05 | 2015-01-06 | 1d | 0d |  | Developer | 8h |  |
| 27 | 4.2 | Identify modular/tiered design parameters |  | 1d | 2015-01-06 | 2015-01-07 | 26 | 2015-01-06 | 2015-01-07 | 1d | 0d |  | Developer | 8h |  |
| 28 | 4.3 | Assign development staff |  | 1d | 2015-01-07 | 2015-01-08 | 27 | 2015-01-07 | 2015-01-08 | 1d | 0d |  | Developer | 8h |  |
| 29 | 4.4 | Develop code |  | 15d | 2015-01-08 | 2015-01-30 | 28 | 2015-01-08 | 2015-01-30 | 15d | 0d |  | Developer | 120h |  |
| 30 | 4.5 | Developer testing (primary debugging) |  | 15d | 2015-01-14 | 2015-02-05 | 29FS-7.5% | 2015-01-14 | 2015-02-05 | 15d | 0d |  | Developer | 120h |  |
| 31 | 4.6 | Development complete | milestone | 0d | 2015-02-05 | 2015-02-05 | 30 | 2015-02-05 | 2015-02-05 | 0d | 0d |  |  |  | Yes |
| 32 | 5 | **Testing** |  | 48.75d | 2015-01-05 | 2015-03-18 |  | 2015-01-05 | 2015-03-18 | 48.75d | 22d |  |  | 280h |  |
| 33 | 5.1 | Develop unit test plans using product specifications |  | 4d | 2015-01-05 | 2015-01-09 | 24 | 2015-01-05 | 2015-01-09 | 4d | 24.75d | 17.75d | Testers | 32h |  |
| 34 | 5.2 | Develop integration test plans using product specifications |  | 4d | 2015-01-05 | 2015-01-09 | 24 | 2015-01-05 | 2015-01-09 | 4d | 66.75d |  | Testers | 32h |  |
| 35 | 5.3 | **Unit Testing** |  | 15d | 2015-02-05 | 2015-02-27 |  | 2015-02-05 | 2015-02-27 | 15d | 7d |  |  | 120h |  |
| 36 | 5.3.1 | Review modular code |  | 5d | 2015-02-05 | 2015-02-12 | 33, 31 | 2015-02-05 | 2015-02-12 | 5d | 7d | 0d | Testers | 40h |  |
| 37 | 5.3.2 | Test component modules to product specifications |  | 2d | 2015-02-12 | 2015-02-16 | 31, 36 | 2015-02-12 | 2015-02-16 | 2d | 7d | 0d | Testers | 16h |  |
| 38 | 5.3.3 | Identify anomalies to product specifications |  | 3d | 2015-02-16 | 2015-02-19 | 37 | 2015-02-16 | 2015-02-19 | 3d | 7d | 0d | Testers | 24h |  |
| 39 | 5.3.4 | Modify code |  | 3d | 2015-02-20 | 2015-02-25 | 38 | 2015-02-20 | 2015-02-25 | 3d | 7d | 0d | Testers | 24h |  |
| 40 | 5.3.5 | Re-test modified code |  | 2d | 2015-02-25 | 2015-02-27 | 39 | 2015-02-25 | 2015-02-27 | 2d | 7d | 0d | Testers | 16h |  |
| 41 | 5.3.6 | Unit testing complete | milestone | 0d | 2015-02-27 | 2015-02-27 | 40 | 2015-02-27 | 2015-02-27 | 0d | 7d | 0d |  |  | Yes |
| 42 | 5.4 | **Integration Testing** |  | 12d | 2015-02-27 | 2015-03-18 |  | 2015-02-27 | 2015-03-18 | 12d | 7d |  |  | 96h |  |
| 43 | 5.4.1 | Test module integration |  | 5d | 2015-02-27 | 2015-03-06 | 41 | 2015-02-27 | 2015-03-06 | 5d | 7d | 0d | Testers | 40h |  |
| 44 | 5.4.2 | Identify anomalies to specifications |  | 2d | 2015-03-06 | 2015-03-10 | 43 | 2015-03-06 | 2015-03-10 | 2d | 7d | 0d | Testers | 16h |  |
| 45 | 5.4.3 | Modify code |  | 3d | 2015-03-10 | 2015-03-13 | 44 | 2015-03-10 | 2015-03-13 | 3d | 7d | 0d | Testers | 24h |  |
| 46 | 5.4.4 | Re-test modified code |  | 2d | 2015-03-16 | 2015-03-18 | 45 | 2015-03-16 | 2015-03-18 | 2d | 7d | 0d | Testers | 16h |  |
| 47 | 5.4.5 | Integration testing complete | milestone | 0d | 2015-03-18 | 2015-03-18 | 46 | 2015-03-18 | 2015-03-18 | 0d | 7d |  |  |  | yes |
| 48 | 6 | **Training** |  | 55.75d | 2015-01-05 | 2015-03-27 |  | 2015-01-05 | 2015-03-27 | 55.75d | 0d |  |  | 336h |  |
| 49 | 6.1 | Develop training specifications for end users |  | 3d | 2015-01-05 | 2015-01-08 | 24 | 2015-01-05 | 2015-01-08 | 3d | 18.75d |  | Trainers | 24h |  |
| 50 | 6.2 | Develop training specifications for helpdesk support staff |  | 3d | 2015-01-05 | 2015-01-08 | 24 | 2015-01-05 | 2015-01-08 | 3d | 18.75d |  | Trainers | 24h |  |
| 51 | 6.3 | Identify training delivery methodology (computer based training, classroom, etc.) |  | 2d | 2015-01-05 | 2015-01-07 | 24 | 2015-01-05 | 2015-01-07 | 2d | 19.75d |  | Trainers | 16h |  |
| 52 | 6.4 | Develop training materials |  | 5w | 2015-02-05 | 2015-03-13 | 49, 31, 50, 51 | 2015-02-05 | 2015-03-13 | 5w | 0d |  | Trainers | 200h |  |
| 53 | 6.5 | Conduct training usability study |  | 4d | 2015-03-16 | 2015-03-20 | 52 | 2015-03-16 | 2015-03-20 | 4d | 0d |  | Trainers | 32h |  |
| 54 | 6.6 | Finalize training materials |  | 3d | 2015-03-20 | 2015-03-25 | 53 | 2015-03-20 | 2015-03-25 | 3d | 0d |  | Trainers | 24h |  |
| 55 | 6.7 | Develop training delivery mechanism |  | 2d | 2015-03-25 | 2015-03-27 | 54 | 2015-03-25 | 2015-03-27 | 2d | 0d |  | Trainers | 16h |  |
| 56 | 6.8 | Training materials complete | milestone | 0d | 2015-03-27 | 2015-03-27 | 55 | 2015-03-27 | 2015-03-27 | 0d | 0d |  |  |  |  |

Notes:
- 29: Plan QA: . is within the next 8 weeks and is more than 5 days in duration
- 30: Plan QA: . is within the next 8 weeks and is more than 5 days in duration
- 34: Plan QA: No Successor.
- 52: Plan QA: Over 20d.

| ID | WBS | Task | Type | Duration | Start | Finish | Predecessors | Baseline start | Baseline finish | Baseline duration | Total slack | Free slack | Resources | Work | PM3 Milestone |
| --- | --- | --- | --- | --- | --- | --- | --- | --- | --- | --- | --- | --- | --- | --- | --- |
| 57 | 7 | **Documentation** |  | 30.5d | 2015-01-05 | 2015-02-18 |  | 2015-01-05 | 2015-02-18 | 30.5d | 25.25d |  |  | 336h |  |
| 58 | 7.1 | Develop Help specification |  | 1d | 2015-01-05 | 2015-01-06 | 24 | 2015-01-05 | 2015-01-06 | 1d | 34.75d | 9.5d | Technical Communicators | 8h |  |
| 59 | 7.2 | Develop Help system |  | 3w | 2015-01-20 | 2015-02-11 | 58, 29FS-5% | 2015-01-20 | 2015-02-11 | 3w | 25.25d | 0d | Technical Communicators | 120h |  |
| 60 | 7.3 | Review Help documentation |  | 3d | 2015-02-11 | 2015-02-16 | 59 | 2015-02-11 | 2015-02-16 | 3d | 25.25d | 0d | Technical Communicators | 24h |  |
| 61 | 7.4 | Incorporate Help documentation feedback |  | 2d | 2015-02-16 | 2015-02-18 | 60 | 2015-02-16 | 2015-02-18 | 2d | 25.25d | 0d | Technical Communicators | 16h |  |
| 62 | 7.5 | Develop user manuals specifications |  | 2d | 2015-01-05 | 2015-01-07 | 24 | 2015-01-05 | 2015-01-07 | 2d | 34.75d | 8.5d | Technical Communicators | 16h |  |
| 63 | 7.6 | Develop user manuals |  | 3w | 2015-01-20 | 2015-02-11 | 62, 29FS-5% | 2015-01-20 | 2015-02-11 | 3w | 26.25d | 0d | Technical Communicators | 120h |  |
| 64 | 7.7 | Review all user documentation |  | 2d | 2015-02-11 | 2015-02-13 | 63 | 2015-02-11 | 2015-02-13 | 2d | 26.25d | 0d | Technical Communicators | 16h |  |
| 65 | 7.8 | Incorporate user documentation feedback |  | 2d | 2015-02-13 | 2015-02-17 | 64 | 2015-02-13 | 2015-02-17 | 2d | 26.25d | 1d | Technical Communicators | 16h |  |
| 66 | 7.9 | Documentation complete | milestone | 0d | 2015-02-18 | 2015-02-18 | 65, 61 | 2015-02-18 | 2015-02-18 | 0d | 25.25d |  |  |  |  |
| 67 | 8 | **Pilot** |  | 77.25d | 2014-12-02 | 2015-04-10 |  | 2014-12-02 | 2015-04-10 | 77.25d | 0d |  |  | 64h |  |
| 68 | 8.1 | Identify test group |  | 1d | 2014-12-02 | 2014-12-03 | 16 | 2014-12-02 | 2014-12-03 | 1d | 68.25d | 0d | Project Manager | 8h |  |
| 69 | 8.2 | Develop software delivery mechanism |  | 1d | 2014-12-03 | 2014-12-04 | 68 | 2014-12-03 | 2014-12-04 | 1d | 68.25d |  |  |  |  |
| 70 | 8.3 | Install/deploy software |  | 1d | 2015-03-27 | 2015-03-30 | 47, 69, 66, 56 | 2015-03-27 | 2015-03-30 | 1d | 0d |  | Deployment Team | 8h |  |
| 71 | 8.4 | Obtain user feedback |  | 1w | 2015-03-30 | 2015-04-08 | 70 | 2015-03-30 | 2015-04-08 | 1w | 0d |  | Deployment Team | 40h |  |
| 72 | 8.5 | Evaluate testing information |  | 1d | 2015-04-09 | 2015-04-10 | 71 | 2015-04-09 | 2015-04-10 | 1d | 0d |  | Deployment Team | 8h |  |
| 73 | 8.6 | Pilot complete | milestone | 0d | 2015-04-10 | 2015-04-10 | 72 | 2015-04-10 | 2015-04-10 | 0d | 0d |  |  |  | Yes |
| 74 | 9 | **Deployment** |  | 5d | 2015-04-10 | 2015-04-17 |  | 2015-04-10 | 2015-04-17 | 5d | 0d |  |  | 40h |  |
| 75 | 9.1 | Determine final deployment strategy |  | 1d | 2015-04-10 | 2015-04-13 | 73 | 2015-04-10 | 2015-04-13 | 1d | 0d |  | Deployment Team | 8h |  |
| 76 | 9.2 | Develop deployment methodology |  | 1d | 2015-04-13 | 2015-04-14 | 75 | 2015-04-13 | 2015-04-14 | 1d | 0d |  | Deployment Team | 8h |  |
| 77 | 9.3 | Secure deployment resources |  | 1d | 2015-04-14 | 2015-04-15 | 76 | 2015-04-14 | 2015-04-15 | 1d | 0d |  | Deployment Team | 8h |  |
| 78 | 9.4 | Train support staff |  | 1d | 2015-04-15 | 2015-04-16 | 77 | 2015-04-15 | 2015-04-16 | 1d | 0d |  | Deployment Team | 8h |  |
| 79 | 9.5 | Deploy software |  | 1d | 2015-04-16 | 2015-04-17 | 78 | 2015-04-16 | 2015-04-17 | 1d | 0d |  | Deployment Team | 8h |  |
| 80 | 9.6 | Deployment complete | milestone | 0d | 2015-04-17 | 2015-04-17 | 79 | 2015-04-17 | 2015-04-17 | 0d | 0d |  |  |  |  |

Notes:
- 59: Plan QA: . is within the next 8 weeks and is more than 5 days in duration
- 63: Plan QA: . is within the next 8 weeks and is more than 5 days in duration

| ID | WBS | Task | Type | Duration | Start | Finish | Predecessors | Complete | Remaining | Baseline start | Baseline finish | Baseline duration | Total slack | Free slack | Constraint | Resources | Work | Dep Log Number |
| --- | --- | --- | --- | --- | --- | --- | --- | --- | --- | --- | --- | --- | --- | --- | --- | --- | --- | --- |
| 81 | 10 | **Post Implementation Review** |  | 3d | 2015-04-17 | 2015-04-22 |  |  |  | 2015-04-17 | 2015-04-22 | 3d | 0d |  |  |  | 24h |  |
| 82 | 10.1 | Document lessons learned |  | 1d | 2015-04-17 | 2015-04-20 | 80 |  |  | 2015-04-17 | 2015-04-20 | 1d | 0d |  |  | Project Manager | 8h |  |
| 83 | 10.2 | Distribute to team members |  | 1d | 2015-04-20 | 2015-04-21 | 82 |  |  | 2015-04-20 | 2015-04-21 | 1d | 0d |  |  | Project Manager | 8h |  |
| 84 | 10.3 | Create software maintenance team |  | 1d | 2015-04-21 | 2015-04-22 | 83 |  |  | 2015-04-21 | 2015-04-22 | 1d | 0d |  |  | Project Manager | 8h |  |
| 85 | 10.4 | Post implementation review complete | milestone | 0d | 2015-04-22 | 2015-04-22 | 84 |  |  | 2015-04-22 | 2015-04-22 | 0d | 0d |  |  |  |  |  |
| 86 | 11 | Software development template complete | milestone | 0d | 2015-04-22 | 2015-04-22 | 85 |  |  | 2015-04-22 | 2015-04-22 | 0d | 0d |  |  |  |  |  |
| 87 | 12 | **Dependencies** |  | 0d | 2014-11-06 | 2014-11-06 |  |  |  | 2014-11-06 | 2014-11-06 | 0d | 102.75d |  |  |  |  |  |
| 88 | 12.1 | Outbound | milestone | 0d | 2014-11-06 | 2014-11-06 |  |  |  | 2014-11-06 | 2014-11-06 | 0d | 102.75d |  |  |  |  | 23 |
| 89 | 12.2 | Inbound | milestone | 0d | 2014-11-06 | 2014-11-06 |  |  |  | 2014-11-06 | 2014-11-06 | 0d | 102.75d |  |  |  |  | 12 |
| 90 | 13 | Task 4 |  | 5d | 2014-11-27 A | 2014-12-04 |  | 38% | 3.12d | 2014-11-27 | 2014-12-04 | 5d | -7.5d | 0d |  |  |  |  |
| 91 | 14 | Task 5 |  | 5d | 2014-12-04 | 2014-12-11 | 90 |  |  | 2014-12-04 | 2014-12-11 | 5d | -7.5d | 0d |  |  |  |  |
| 92 | 15 | Task 6 |  | 5d | 2014-12-11 | 2014-12-18 | 91 |  |  | 2014-12-11 | 2014-12-18 | 5d | -7.5d | 0d |  |  |  |  |
| 93 | 16 | Task 7 |  | 5d | 2014-12-19 | 2015-01-07 | 92 |  |  | 2014-12-19 | 2015-01-07 | 5d | -7.5d | 0d |  |  |  |  |
| 94 | 17 | Task 8 |  | 5d | 2015-01-07 | 2015-01-14 | 93 |  |  | 2015-01-07 | 2015-01-14 | 5d | -7.5d | 0d |  |  |  |  |
| 95 | 18 | Task 9 |  | 5d | 2014-12-23 | 2015-01-11 | 94 |  |  | 2014-12-23 | 2015-01-11 | 5d | -7.5d | 0d | must finish on 2015-01-11 |  |  |  |
| 96 | 19 | **Task 10** |  | 32.5d | 2015-01-12 A | 2015-02-27 | 95 | 25% | 24.38d | 2015-01-12 | 2015-02-27 | 32.5d | 33.69d |  |  | Developer | 260h |  |
| 97 | 19.1 | Task 11 |  | 5d | 2015-01-12 | 2015-01-19 |  |  |  | 2015-01-12 | 2015-01-19 | 5d | 51.19d | 7.5d |  |  |  |  |
| 98 | 19.2 | Task 12 | manual | 5d | 2015-01-29 | 2015-02-05 | 97 |  |  | 2015-01-29 | 2015-02-05 | 5d |  |  |  |  |  |  |
| 99 | 19.3 | Task 13 |  | 5d | 2015-02-05 | 2015-02-12 | 98 |  |  | 2015-02-05 | 2015-02-12 | 5d | 43.69d |  |  |  |  |  |
| 100 | 19.4 | Task 14 |  | 5d | 2015-02-20 A | 2015-02-27 A | 99 | 100% |  | 2015-02-20 | 2015-02-27 | 5d |  |  |  |  |  |  |

Notes:
- 86: Plan QA: No Successor.
- 88: Plan QA: . has an outbound milestone without a predeccessorNo Successor. No Predecessor. Incomplete in past.
- 89: Plan QA: . is an inbound milestone with no successorNo Successor. No Predecessor. Incomplete in past.
- 90: Plan QA: No Predecessor. Negative Float.
- 91: Plan QA: Negative Float.
- 92: Plan QA: Negative Float.
- 93: Plan QA: Negative Float.
- 94: Plan QA: Negative Float.
- 95: Plan QA: Negative Float. Constrained.
- 96: Plan QA: Summary predeceessor. Summary resourced.
- 97: Plan QA: No Predecessor.
- 98: Plan QA: Manually Scheduled.
- 100: Plan QA: Complete in future.
